# Mise en place du workflow d'intégration continue

Schedule from GanttProject, 2026-09-01 to 2026-11-13.
Furious Ducks
Projet interne. Du cadrage à la formation des équipes. Planification au plus tôt, voir la partie H du cahier des spécifications techniques.

## Calendars

- Project calendar: Mon-Fri working; Sat-Sun off.

## Resources

| Resource |
| --- |
| Ingénieur DevOps |
| Développeur confirmé |
| Chef de projet |

## Schedule

| ID | WBS | Task | Duration | Start | Finish | Predecessors | Complete | Resources |
| --- | --- | --- | --- | --- | --- | --- | --- | --- |
| 1 | 1 | **A. Cadrage et audit de l'existant** | 1d | 2026-09-01 | 2026-09-01 |  |  |  |
| 2 | 1.1 | A.1 Entretiens avec les équipes, recensement des pratiques | 2d | 2026-09-01 | 2026-09-02 |  | 100% | Ingénieur DevOps |
| 3 | 1.2 | A.2 Inventaire des projets et de leurs contraintes | 2d | 2026-09-03 | 2026-09-04 | 2 | 100% | Ingénieur DevOps |
| 4 | 1.3 | A.3 Choix des briques et validation en comité | 3d | 2026-09-07 | 2026-09-09 | 3 | 100% | Chef de projet |
| 5 | 2 | **B. Socle serveur et Docker** | 1d | 2026-09-01 | 2026-09-01 |  |  |  |
| 6 | 2.1 | B.1 Commande du serveur et des noms de domaine | 1d | 2026-09-10 | 2026-09-10 | 4 | 100% | Ingénieur DevOps |
| 7 | 2.2 | B.2 Installation, durcissement, filtrage réseau | 2d | 2026-09-11 | 2026-09-14 | 6 | 100% | Ingénieur DevOps |
| 8 | 2.3 | B.3 Docker, réseaux cloisonnés, volumes | 1d | 2026-09-15 | 2026-09-15 | 7 | 100% | Ingénieur DevOps |
| 9 | 2.4 | B.4 Reverse proxy, certificats, sous-domaines | 2d | 2026-09-16 | 2026-09-17 | 8 | 100% | Ingénieur DevOps |
| 10 | 3 | **C. SCM et conventions Git** | 1d | 2026-09-01 | 2026-09-01 |  |  |  |
| 11 | 3.1 | C.1 Installation du SCM et des comptes | 2d | 2026-09-18 | 2026-09-21 | 9 | 100% | Ingénieur DevOps |
| 12 | 3.2 | C.2 Modèle de branches et protections | 2d | 2026-09-22 | 2026-09-23 | 11 | 100% | Ingénieur DevOps |
| 13 | 3.3 | C.3 Migration des dépôts existants | 2d | 2026-09-24 | 2026-09-25 | 12 | 100% | Développeur confirmé |
| 14 | 4 | **D. Jenkins, agents et registry** | 1d | 2026-09-01 | 2026-09-01 |  |  |  |
| 15 | 4.1 | D.1 Installation de Jenkins et raccordement au SCM | 2d | 2026-09-24 | 2026-09-25 | 12 | 100% | Ingénieur DevOps |
| 16 | 4.2 | D.2 Agents conteneurisés et jetables | 3d | 2026-09-28 | 2026-09-30 | 15 | 100% | Ingénieur DevOps |
| 17 | 4.3 | D.3 Registry privé et politique de tags | 2d | 2026-10-01 | 2026-10-02 | 16 | 100% | Ingénieur DevOps |
| 18 | 4.4 | D.4 Premier pipeline de bout en bout | 1d | 2026-10-05 | 2026-10-05 | 17 | 100% | Ingénieur DevOps |
| 19 | 5 | **E. Pipelines des trois types de projets** | 1d | 2026-09-01 | 2026-09-01 |  |  |  |
| 20 | 5.1 | E.1 Pipeline site vitrine, minification et compression | 3d | 2026-10-06 | 2026-10-08 | 18 | 100% | Ingénieur DevOps |
| 21 | 5.2 | E.2 Pipeline site administrable, tests et migrations | 4d | 2026-10-06 | 2026-10-09 | 18 | 100% | Ingénieur DevOps |
| 22 | 5.3 | E.3 Pipeline application mobile hybride | 3d | 2026-10-06 | 2026-10-08 | 18 | 100% | Ingénieur DevOps |
| 23 | 5.4 | E.4 Jenkinsfile de référence et documentation | 2d | 2026-10-12 | 2026-10-13 | 20, 21, 22 | 100% | Développeur confirmé |
| 24 | 5.5 | E.5 Intégration des contrôles de sécurité | 3d | 2026-10-12 | 2026-10-14 | 21 | 100% | Développeur confirmé |

Notes:
- 2: Ressource : devops. Coût : 2 j x 660 € = 1320 €
- 3: Ressource : devops. Coût : 2 j x 660 € = 1320 €
- 4: Ressource : chef. Coût : 3 j x 660 € = 1980 €
- 6: Ressource : devops. Coût : 1 j x 660 € = 660 €
- 7: Ressource : devops. Coût : 2 j x 660 € = 1320 €
- 8: Ressource : devops. Coût : 1 j x 660 € = 660 €
- 9: Ressource : devops. Coût : 2 j x 660 € = 1320 €
- 11: Ressource : devops. Coût : 2 j x 660 € = 1320 €
- 12: Ressource : devops. Coût : 2 j x 660 € = 1320 €
- 13: Ressource : dev. Coût : 2 j x 580 € = 1160 €
- 15: Ressource : devops. Coût : 2 j x 660 € = 1320 €
- 16: Ressource : devops. Coût : 3 j x 660 € = 1980 €
- 17: Ressource : devops. Coût : 2 j x 660 € = 1320 €
- 18: Ressource : devops. Coût : 1 j x 660 € = 660 €
- 20: Ressource : devops. Coût : 3 j x 660 € = 1980 €
- 21: Ressource : devops. Coût : 4 j x 660 € = 2640 €
- 22: Ressource : devops. Coût : 3 j x 660 € = 1980 €
- 23: Ressource : dev. Coût : 2 j x 580 € = 1160 €
- 24: Ressource : dev. Coût : 3 j x 580 € = 1740 €

| ID | WBS | Task | Type | Duration | Start | Finish | Predecessors | Complete | Resources |
| --- | --- | --- | --- | --- | --- | --- | --- | --- | --- |
| 25 | 6 | **F. Environnements dev, préproduction, production** |  | 1d | 2026-09-01 | 2026-09-01 |  |  |  |
| 26 | 6.1 | F.1 Environnement de développement et déploiement automatique |  | 2d | 2026-10-12 | 2026-10-13 | 21 | 100% | Ingénieur DevOps |
| 27 | 6.2 | F.2 Environnement de préproduction et anonymisation |  | 3d | 2026-10-14 | 2026-10-16 | 26 | 100% | Ingénieur DevOps |
| 28 | 6.3 | F.3 Environnement de production et validation humaine |  | 3d | 2026-10-19 | 2026-10-21 | 27 | 100% | Ingénieur DevOps |
| 29 | 7 | **G. Métriques et alertes** |  | 1d | 2026-09-01 | 2026-09-01 |  |  |  |
| 30 | 7.1 | G.1 Collecte des métriques système et conteneurs |  | 2d | 2026-10-22 | 2026-10-23 | 28 | 100% | Ingénieur DevOps |
| 31 | 7.2 | G.2 Tableaux de bord et indicateurs de pilotage |  | 2d | 2026-10-26 | 2026-10-27 | 30 | 100% | Ingénieur DevOps |
| 32 | 7.3 | G.3 Règles d'alerte et canaux de notification |  | 1d | 2026-10-28 | 2026-10-28 | 31 | 100% | Ingénieur DevOps |
| 33 | 8 | **H. Sauvegardes et restauration** |  | 1d | 2026-09-01 | 2026-09-01 |  |  |  |
| 34 | 8.1 | H.1 Sauvegardes automatisées et externalisation chiffrée |  | 3d | 2026-10-22 | 2026-10-26 | 28 | 100% | Ingénieur DevOps |
| 35 | 8.2 | H.2 Procédures de restauration des trois environnements |  | 2d | 2026-10-27 | 2026-10-28 | 34 | 100% | Ingénieur DevOps |
| 36 | 8.3 | H.3 Test de restauration réel, chronométré et consigné |  | 1d | 2026-10-29 | 2026-10-29 | 35 | 100% | Ingénieur DevOps |
| 37 | 9 | **I. Documentation et procédures** |  | 1d | 2026-09-01 | 2026-09-01 |  |  |  |
| 38 | 9.1 | I.1 Diagramme d'infrastructure et procédures BPMN |  | 2d | 2026-10-30 | 2026-11-02 | 36 | 100% | Ingénieur DevOps |
| 39 | 9.2 | I.2 Fiches de mode opératoire par profil |  | 2d | 2026-11-03 | 2026-11-04 | 38 | 60% | Ingénieur DevOps |
| 40 | 9.3 | I.3 Relecture et validation |  | 2d | 2026-11-05 | 2026-11-06 | 39 |  | Chef de projet |
| 41 | 10 | **J. Formation des équipes** |  | 1d | 2026-09-01 | 2026-09-01 |  |  |  |
| 42 | 10.1 | J.1 Préparation des supports et des ateliers |  | 2d | 2026-11-09 | 2026-11-10 | 40 |  | Ingénieur DevOps |
| 43 | 10.2 | J.2 Ateliers développeurs, sept sessions |  | 3d | 2026-11-11 | 2026-11-13 | 42 |  | Ingénieur DevOps |
| 44 | 10.3 | J.3 Ateliers chefs de projet et présentation générale |  | 2d | 2026-11-11 | 2026-11-12 | 42 |  | Chef de projet |
| 45 | 11 | W1 Choix techniques validés | milestone | 0d | 2026-09-09 | 2026-09-09 |  |  |  |
| 46 | 12 | W2 Socle en ligne | milestone | 0d | 2026-09-17 | 2026-09-17 |  |  |  |
| 47 | 13 | W3 Code versionné | milestone | 0d | 2026-09-25 | 2026-09-25 |  |  |  |
| 48 | 14 | W4 Première chaîne complète | milestone | 0d | 2026-10-05 | 2026-10-05 |  |  |  |
| 49 | 15 | W5 Généricité prouvée | milestone | 0d | 2026-10-13 | 2026-10-13 |  |  |  |
| 50 | 16 | W6 Trois environnements actifs | milestone | 0d | 2026-10-21 | 2026-10-21 |  |  |  |
| 51 | 17 | W7 Reprise après sinistre validée | milestone | 0d | 2026-10-29 | 2026-10-29 |  |  |  |
| 52 | 18 | W8 Équipes autonomes | milestone | 0d | 2026-11-12 | 2026-11-12 |  |  |  |

Notes:
- 26: Ressource : devops. Coût : 2 j x 660 € = 1320 €
- 27: Ressource : devops. Coût : 3 j x 660 € = 1980 €
- 28: Ressource : devops. Coût : 3 j x 660 € = 1980 €
- 30: Ressource : devops. Coût : 2 j x 660 € = 1320 €
- 31: Ressource : devops. Coût : 2 j x 660 € = 1320 €
- 32: Ressource : devops. Coût : 1 j x 660 € = 660 €
- 34: Ressource : devops. Coût : 3 j x 660 € = 1980 €
- 35: Ressource : devops. Coût : 2 j x 660 € = 1320 €
- 36: Ressource : devops. Coût : 1 j x 660 € = 660 €
- 38: Ressource : devops. Coût : 2 j x 660 € = 1320 €
- 39: Ressource : devops. Coût : 2 j x 660 € = 1320 €
- 40: Ressource : chef. Coût : 2 j x 660 € = 1320 €
- 42: Ressource : devops. Coût : 2 j x 660 € = 1320 €
- 43: Ressource : devops. Coût : 3 j x 660 € = 1980 €
- 44: Ressource : chef. Coût : 2 j x 660 € = 1320 €
